# 集团（股份、政务、金融、江分）资产云上线任务

Schedule from a web Gantt chart, 2025-07-18 to 2025-08-02.
Every day is a working day

## Schedule

| ID | WBS | Task | Duration | Start | Finish | Complete | inPeople |
| --- | --- | --- | --- | --- | --- | --- | --- |
| 2 | 1 | **UI模板差异化配置** | 1d | 2025-07-22 | 2025-07-22 | 100% |  |
| 3 | 1.1 | 政务 | 1d | 2025-07-22 | 2025-07-22 | 100% | 金鹏 |
| 4 | 1.2 | 金融 | 1d | 2025-07-22 | 2025-07-22 | 100% | 陈栎 |
| 5 | 1.3 | 股份 | 1d | 2025-07-22 | 2025-07-22 | 100% | 王世雷 |
| 6 | 2 | **工作流配置** | 1d | 2025-07-23 | 2025-07-23 | 100% |  |
| 7 | 2.1 | 政务 | 1d | 2025-07-23 | 2025-07-23 | 100% | 金鹏 |
| 8 | 2.2 | 金融 | 1d | 2025-07-23 | 2025-07-23 | 100% | 陈栎 |
| 9 | 2.3 | 股份（除江分） | 1d | 2025-07-23 | 2025-07-23 | 100% | 王世雷 |
| 10 | 2.4 | 江西分公司 | 1d | 2025-07-23 | 2025-07-23 | 100% | 郭加升、朱涛 |
| 11 | 3 | **资产云推送使用信息变动到NC65程序开发** | 14d | 2025-07-18 | 2025-07-31 | 94% |  |
| 12 | 3.1 | 接口权限开放、表头数据开放 | 1d | 2025-07-18 | 2025-07-18 | 100% | 王世雷、张宏飞、陈冲、刘洋 |
| 13 | 3.2 | 程序开发 | 5d | 2025-07-18 | 2025-07-22 | 100% | 陈冲 |
| 14 | 3.3 | 测试 | 10d | 2025-07-22 | 2025-07-31 | 90% | 陈冲 |
| 15 | 4 | 各机构资产云全员应用授权程序开发 | 5d | 2025-07-18 | 2025-07-22 | 100% | 张砾君 |
| 16 | 5 | **407资产数据梳理、数据导入** | 5d | 2025-07-24 | 2025-07-28 | 60% |  |
| 17 | 5.1 | 政务 | 5d | 2025-07-24 | 2025-07-28 | 100% | 金鹏 |
| 18 | 5.2 | 金融 | 5d | 2025-07-24 | 2025-07-28 |  | 陈栎 |
| 19 | 5.3 | **股份（除江分）** | 5d | 2025-07-24 | 2025-07-28 | 50% |  |
| 20 | 5.3.1 | 数据中心 | 5d | 2025-07-24 | 2025-07-28 | 100% | 王世雷、赵英杰 |
| 21 | 5.3.2 | 办公 | 5d | 2025-07-24 | 2025-07-28 |  | 闫雯 |
| 22 | 5.4 | 江西分公司 | 5d | 2025-07-24 | 2025-07-28 | 100% | 郭加升、朱涛 |
| 23 | 6 | **全员资产应用PC端和移动端发单测试** | 4d | 2025-07-28 | 2025-07-31 | 96% |  |
| 24 | 6.1 | 政务 | 4d | 2025-07-28 | 2025-07-31 | 100% | 金鹏 |
| 25 | 6.2 | 金融 | 4d | 2025-07-28 | 2025-07-31 | 90% | 陈栎 |
| 26 | 6.3 | 江西分公司 | 4d | 2025-07-28 | 2025-07-31 | 100% | 郭加升、朱涛 |

Notes:
- 24: 预计提前

| ID | WBS | Task | Duration | Start | Finish | Complete | inPeople | Status |
| --- | --- | --- | --- | --- | --- | --- | --- | --- |
| 27 | 6.4 | **股份（除江分）** | 4d | 2025-07-28 | 2025-07-31 | 95% |  |  |
| 28 | 6.4.1 | 数据中心 | 4d | 2025-07-28 | 2025-07-31 | 100% | 王世雷 |  |
| 29 | 6.4.2 | 办公 | 4d | 2025-07-28 | 2025-07-31 | 90% | 闫雯 |  |
| 30 | 7 | 执行407推NC程序 | 1d | 2025-07-31 | 2025-07-31 |  | 熊海情、林杰、王娜 | suspended |
| 31 | 8 | **资产云上线** | 3d | 2025-07-31 | 2025-08-02 |  |  |  |
| 32 | 8.1 | 集团发文公告（申请停机窗口） | 1d | 2025-08-01 | 2025-08-01 |  | 王世雷、郭加升、金鹏、陈栎 |  |
| 33 | 8.2 | “设备管理系统”入口 | 1d | 2025-08-01 | 2025-08-01 |  | 王婷婷 |  |
| 34 | 8.3 | 处理存量单据 | 1d | 2025-08-01 | 2025-08-01 |  | 闫雯 |  |
| 35 | 8.4 | 设置407全员只读，回收权限 | 1d | 2025-08-01 | 2025-08-01 |  | 刘文明、赵英杰 |  |
| 36 | 8.5 | 资产云数据清理 | 1d | 2025-08-01 | 2025-08-01 |  | 郭杨、何勇、叶勋、孙艳军 |  |
| 37 | 8.6 | **资产数据初始化** | 1d | 2025-08-02 | 2025-08-02 |  |  |  |
| 38 | 8.6.1 | **股份（除江分）梳理导入** | 1d | 2025-08-02 | 2025-08-02 |  |  |  |
| 39 | 8.6.1.1 | 数据中心梳理导入 | 1d | 2025-08-02 | 2025-08-02 |  | 王世雷 |  |
| 40 | 8.6.1.2 | 办公梳理导入 | 1d | 2025-08-02 | 2025-08-02 |  | 闫雯 |  |
| 41 | 8.6.2 | 政务梳理导入 | 1d | 2025-08-02 | 2025-08-02 |  | 金鹏 |  |
| 42 | 8.6.3 | 金融梳理导入 | 1d | 2025-08-02 | 2025-08-02 |  | 陈栎 |  |
| 43 | 8.6.4 | 江西分公司梳理导入 | 1d | 2025-08-02 | 2025-08-02 |  | 郭加升、朱涛 |  |
| 44 | 8.7 | 发单验证 | 1d | 2025-08-02 | 2025-08-02 |  | 各机构负责人 |  |
| 45 | 8.8 | 资产云权限回收 | 1d | 2025-08-02 | 2025-08-02 |  | 王世雷、王婷婷 |  |
| 46 | 8.9 | 资产使用迁移公告及邮件 | 1d | 2025-08-02 | 2025-08-02 |  | 王世雷 |  |

Notes:
- 30: 7月份的数据还是使用原来的方式同步到nc（需要向林杰和王娜确认）,把407历史的使用人使用部门变动信息推送到NC65财务系统，资产云上线后自动定时同步，同步时间需要王娜确认
- 32: 统一公告，周六
- 33: 17：30停服务
- 34: 407系统完成存量单据处理18：30处理完成。
- 35: 设置全员只读，确保数据静态。资产云上线后必须确保数据库只有留一个只读账号，其余回收。
- 36: 资产云现有数据和单据，全量删除资产云数据，待提供节点清单。
- 37: 周六 9：00到场，
- 42: 待确认
- 43: 集团设备排除（通过资产编码排除）
- 44: 各机构发单验证
- 45: 各角色保留必要权限，回收超配权限
- 46: 邮件通知人力、公告全员，资产管理迁移到资产云
